# CardioGuardian

Schedule from MS Project, 2021-05-05 to 2023-05-05, costs in €.
Plan projekta razvoja novog hardversko-softversko
ETF

## Calendars

- Standard: Mon-Fri 08:00-12:00, 13:00-17:00; Sat-Sun off. Exceptions (off unless hours are given): 2022-01-01 (Nova godina 2022), 2022-01-07 (Božić 2022), 2022-02-15 to 2022-02-16 (Sretenje - Dan državnosti 2022), 2022-03-17 (Saint Patrick's Day 2022), 2022-04-17 (Katolički Uskrs 2022), 2022-04-24 (Uskrs 2022), 2022-05-01 (Praznik rada 2022), 2022-08-01 (Swiss National Holiday 2022), 2022-11-11 (Dan primirja u I svetskom ratu 2022), 2022-12-25 (Katolički Božić 2022), 2023-01-01 (Nova godina 2023), 2023-01-07 (Božić 2023), 2023-02-15 to 2023-02-16 (Sretenje - Dan državnosti 2023), 2023-03-17 (Saint Patrick's Day 2023), 2023-04-16 (Uskrs 2023), 2023-04-17 (Katolički Uskrs 2023), 2023-05-01 (Praznik rada 2023).

## Resources

| Resource | Group | Unit | Rate |
| --- | --- | --- | --- |
| Krvni pritisak senzor |  | Komad | 120 |
| Štipaljke za EKG - visokokvalitetni kablovi i elektrode |  | Komad | 200 |
| Sistem za kontrolu glukoze u krvi |  | Komad | 60 |
| Biohemijski analizator |  | Komad | 3000 |
| Senzor za merenje otkucaja srca |  | Komad | 80 |
| Grafička karta |  | Komad | 12825 |
| Računar |  | Komad | 1600 |
| Mobilni telefon - osnovne funkcionalnosti |  | Komad | 250 |
| Mobilni telefon - napredne funkcionalnosti |  | Komad | 900 |
| Štampač i skener |  | Komad | 120 |
| Server |  | Komad | 99700 |
| Windows Server Datacenter 2019 |  |  |  |
| Autodesk Product Design & Manufacturing Collection - AutoCad |  |  |  |
| SpiraTest |  |  |  |
| SpiraPlan |  |  |  |
| Oracle DBMS |  |  |  |
| Povratna avionska karta (Stokholm-Beograd) |  |  |  |
| Povratna avionska karta (Lviv - Beograd) |  |  |  |
| Povratna avionska karta (Dablin - Beograd) |  |  |  |
| Povratna avionska karta (Monkstovn - Beograd) |  |  |  |
| Povratna avionska karta (Milano - Beograd) |  |  |  |
| Povratna avionska karta (Cirih - Beograd) |  |  |  |
| Povratna avionska karta (Stokholm - Budimpešta) |  |  |  |
| Povratna avionska karta (Lviv - Budimpešta) |  |  |  |
| Povratna avionska karta (Stokholm - Bazel) |  |  |  |
| Povratna avionska karta (Lviv - Bazel) |  |  |  |
| Povratna avionska karta (Beograd - Bazel) |  |  |  |
| Povratna avionska karta (Beograd - Dablin) |  |  |  |
| Povratna avionska karta (Cirih - Dablin) |  |  |  |
| Povratna avionska karta (Lviv - Cirih) |  |  |  |
| Povratna avionska karta (Beograd - Cirih) |  |  |  |
| Povratna avionska karta (Stokholm - Cirih) |  |  |  |
| Povratna avionska karta (Dablin - Cirih) |  |  |  |
| Povratna avionska karta (Monkstovn - Cirih) |  |  |  |
| Povratna avionska karta (Milano - Cirih) |  |  |  |
| Povratna avionska karta (Beograd - Cirih) |  |  |  |
| Povratna avionska karta (Cirih - San Francisko) |  |  |  |
| Povratna avionska karta (Dablin - San Francisko) |  |  |  |
| Povratna avionska karta (Beograd - San Francisko) |  |  |  |
| Povratna avionska karta (Beograd - Amsterdam) |  |  |  |
| Povratna avionska karta (Cirih - Amsterdam) |  |  |  |
| Povratna avionska karta (Beograd - Rim) |  |  |  |
| Povratna avionska karta (Dablin - Rim) |  |  |  |
| Povratna avionska karta (Beograd - London) |  |  |  |
| Povratna avionska karta (Cirih - London) |  |  |  |
| Povratna avionska karta (Beograd - Tokio) |  |  |  |
| Povratna avionska karta (Dablin - Tokio) |  |  |  |
| Povratna avionska karta (Cirih - Tokio) |  |  |  |
| Dnevnica i noćenje u Beogradu (5 dana) |  |  |  |
| Dnevnica i noćenje u Budimpešti (7 dana) |  |  |  |
| Dnevnica i noćenje u Bazelu (7 dana) |  |  |  |
| Dnevnica i noćenje u Dablinu (10 dana) |  |  |  |
| Dnevnica i noćenje u Cirihu (10 dana) |  |  |  |
| Dnevnica i noćenje u Cirihu (7 dana) |  |  |  |
| Dnevnica i noćenje u San Francisku (10 dana) |  |  |  |
| Dnevnica i noćenje u Amsterdamu (10 dana) |  |  |  |
| Dnevnica i noćenje u Rimu (7 dana) |  |  |  |
| Dnevnica i noćenje u Londonu (10 dana) |  |  |  |
| Dnevnica i noćenje u Tokiju (10 dana) |  |  |  |
| Advokatske usluge |  |  |  |
| Organizacija tim bildinga |  |  |  |
| Izrada promotivnog materijala |  |  |  |
| Usluge firme za marketing |  |  |  |
| Google cloud - TPU (tensor Processing Unit) |  |  |  |
| Usluge Equinix data centra |  |  |  |
| ETF Vođa projekta | ETF |  | 15 |
| ETF Zamenik vođe projekta | ETF |  | 14 |
| ETF Tim Lider 1 | ETF |  | 11 |
| ETF Tim Lider 2 | ETF |  | 11 |
| ETF Tim Lider 3 | ETF |  | 11 |
| ETF Tim 1 Član 1 | ETF |  | 10 |
| ETF Tim 1 Član 2 | ETF |  | 10 |
| ETF Tim 1 Član 3 | ETF |  | 10 |
| ETF Tim 1 Član 4 | ETF |  | 10 |
| ETF Tim 1 Član 5 | ETF |  | 10 |
| ETF Tim 2 Član 1 | ETF |  | 10 |
| ETF Tim 2 Član 2 | ETF |  | 10 |
| ETF Tim 2 Član 3 | ETF |  | 10 |
| ETF Tim 2 Član 4 | ETF |  | 10 |
| ETF Tim 2 Član 5 | ETF |  | 10 |
| ETF Tim 3 Član 1 | ETF |  | 10 |
| ETF Tim 3 Član 2 | ETF |  | 10 |
| ETF Tim 3 Član 3 | ETF |  | 10 |
| ETF Tim 3 Član 4 | ETF |  | 10 |
| ETF Tim 3 Član 5 | ETF |  | 10 |
| Karolinska Institutet Tim Lider | KI |  | 25 |
| Karolinska Institutet Tim 1 Član 1 | KI |  | 21 |
| Karolinska Institutet Tim 1 Član 2 | KI |  | 21 |
| Karolinska Institutet Tim 1 Član 3 | KI |  | 21 |
| Intellias Tim Lider 1 | Intellias |  | 32 |
| Intellias Tim 1 Član 1 | Intellias |  | 27 |
| Intellias Tim 1 Član 2 | Intellias |  | 27 |
| Intellias Tim 1 Član 3 | Intellias |  | 27 |
| Medtronic Tim Lider1 | Medtronic |  | 30 |
| Medtronic Tim 1 Član 1 | Medtronic |  | 26 |
| Medtronic Tim 1 Član 2 | Medtronic |  | 26 |
| Medtronic Tim 1 Član 3 | Medtronic |  | 26 |
| Medtronic Tim 1 Član 4 | Medtronic |  | 26 |
| Medtronic Tim Lider 2 | Medtronic |  | 30 |
| Medtronic Tim 2 Član 1 | Medtronic |  | 26 |
| Medtronic Tim 2 Član 2 | Medtronic |  | 26 |
| Medtronic Tim 2 Član 3 | Medtronic |  | 26 |
| Medtronic Tim 2 Član 4 | Medtronic |  | 26 |
| Zenith Tim Lider 1 | Zenith |  | 30 |
| Zenith Tim 1 Član 1 | Zenith |  | 27 |
| Zenith Tim 1 Član 2 | Zenith |  | 27 |
| Zenith Tim 1 Član 3 | Zenith |  | 27 |
| Zenith Tim 2 Član 1 | Zenith |  | 27 |
| Zenith Tim 2 Član 2 | Zenith |  | 27 |
| Zenith Tim 2 Član 3 | Zenith |  | 27 |
| AppQuality Tim Lider 1 | AppQuality |  | 30 |
| AppQuality Tim 1 Član 1 | AppQuality |  | 27 |
| AppQuality Tim 1 Član 2 | AppQuality |  | 27 |
| AppQuality Tim 1 Član 3 | AppQuality |  | 27 |
| AppQuality Tim 1 Član 4 | AppQuality |  | 27 |
| AppQuality Tim 1 Član 5 | AppQuality |  | 27 |
| ETH Tim Lider 1 | ETH |  | 40 |
| ETH Tim 1 Član 1 | ETH |  | 36 |
| ETH Tim 1 Član 2 | ETH |  | 36 |
| ETH Tim 1 Član 3 | ETH |  | 36 |
| ETH Tim 1 Član 4 | ETH |  | 36 |
| Intellias Tim Lider 2 | Intellias |  | 32 |
| Intellias Tim 2 Član 1 | Intellias |  | 27 |
| Intellias Tim 2 Član 2 | Intellias |  | 27 |
| Intellias Tim 2 Član 3 | Intellias |  | 27 |
| AppQuality Tim 1 Član 6 | AppQuality |  | 27 |
| Zenith Tim Lider 2 | Zenith |  | 30 |

## Schedule

| ID | WBS | Task | Duration | Start | Finish | Predecessors | Total slack | Free slack | Constraint | Resources | Cost |
| --- | --- | --- | --- | --- | --- | --- | --- | --- | --- | --- | --- |
| 1 | 1 | **WP1 - Upravljanje projektom** | 511d | 2021-05-05 | 2023-05-05 |  | 0d |  |  | Advokatske usluge [0.1%] | 80,950 |
| 2 | 1.1 | **Organizacija početnog sastanka** | 5d | 2021-05-05 | 2021-05-12 |  | 6d | 0d |  |  |  |
| 3 | 1.1.1 | Dogovor u vezi datuma sastanka sa svim predstavnicima participanata | 1d | 2021-05-05 | 2021-05-06 |  | 6d | 0d |  |  |  |
| 4 | 1.1.2 | Ugovaranje smeštaja i prevoza za participante | 1d | 2021-05-06 | 2021-05-07 | 3 | 6d | 0d | start no earlier than 2021-05-06 |  |  |
| 5 | 1.1.3 | Zakup prostora i početak pripreme plana sastanka | 1d | 2021-05-07 | 2021-05-10 | 4 | 6d | 0d |  |  |  |
| 6 | 1.1.4 | Razvoj plana sastanka | 1d | 2021-05-10 | 2021-05-11 | 5 | 6d | 0d |  |  |  |
| 7 | 1.1.5 | Završetak organizacije sastanka | 1d | 2021-05-11 | 2021-05-12 | 6 | 6d |  |  |  |  |
| 8 | 1.2 | **Kick-off sastanak** | 5d | 2021-05-12 | 2021-05-19 | 2 | 6d | 0d |  | Dnevnica i noćenje u Beogradu (5 dana) [0.1%]; Povratna avionska karta (Stokholm-Beograd) [0.1%]; Povratna avionska karta (Cirih - Beograd) [0.1%]; Povratna avionska karta (Dablin - Beograd) [0.1%]; Povratna avionska karta (Lviv - Beograd) [0.1%]; Povratna avionska karta (Milano - Beograd) [0.1%]; Povratna avionska karta (Monkstovn - Beograd) [0.1%] | 15,320 |
| 9 | 1.2.1 | Upoznavanje članova i pregled ciljeva projekta | 1d | 2021-05-12 | 2021-05-13 |  | 6d | 0d |  |  |  |
| 10 | 1.2.2 | Pregled budzeta | 2d | 2021-05-13 | 2021-05-17 | 9 | 6d | 0d |  |  |  |
| 11 | 1.2.3 | Podela posla i definisanje rokova | 2d | 2021-05-17 | 2021-05-19 | 10 | 6d |  |  |  |  |
| 12 | 1.3 | **Upravljanje timovima** | 5d | 2021-05-19 | 2021-05-26 | 8 | 6d | 0d |  |  |  |
| 13 | 1.3.1 | Formiranje timova | 3d | 2021-05-19 | 2021-05-24 |  | 2d |  |  |  |  |
| 14 | 1.3.2 | Međusobno upoznavanje | 3d | 2021-05-19 | 2021-05-24 |  | 2d |  |  |  |  |
| 15 | 1.3.3 | Predstavljanje rasporeda dnevnih, nedeljnih i mesečnih sastanaka | 3d | 2021-05-19 | 2021-05-24 |  | 2d |  |  |  |  |
| 16 | 1.3.4 | Pojedinačno predstavljanje | 3d | 2021-05-19 | 2021-05-24 |  | 6d | 0d |  |  |  |
| 17 | 1.3.5 | Objašnjavanje strukture projekta članovima | 2d | 2021-05-24 | 2021-05-26 | 16 | 6d |  |  |  |  |
| 18 | 1.3.6 | Uspostavljanje pravila tima | 2d | 2021-05-24 | 2021-05-26 | 16 | 6d |  |  |  |  |
| 19 | 1.3.7 | Uspostavljanje dnevne rutine | 2d | 2021-05-24 | 2021-05-26 | 16 | 6d |  |  |  |  |
| 20 | 1.3.8 | Uspostavljanje načina komunikacije | 2d | 2021-05-24 | 2021-05-26 | 16 | 6d |  |  |  |  |
| 21 | 1.4 | **Logistika** | 490d | 2021-05-26 | 2023-04-26 | 12 | 6d |  |  |  |  |
| 22 | 1.4.1 | Podela odgovornosti i pisanje RASCI matrice | 7d | 2021-05-26 | 2021-06-04 |  | 6d | 0d |  |  |  |
| 23 | 1.4.2 | Definisanje parametara za praćenje napretka projekta | 3d | 2021-06-04 | 2021-06-09 | 22 | 6d | 0d |  |  |  |
| 24 | 1.4.3 | Pisanje neophodnih dokumenata | 5d | 2021-06-09 | 2021-06-16 | 23 | 433d | 0d |  |  |  |
| 25 | 1.4.4 | Pisanje PBS i RBS | 15d | 2021-06-16 | 2021-07-07 | 24 | 433d | 0d |  |  |  |
| 26 | 1.4.5 | Definisanje merljivosti i definicije završenog | 6d | 2021-07-07 | 2021-07-15 | 25 | 433d | 0d |  |  |  |

| ID | WBS | Task | Type | Duration | Start | Finish | Predecessors | Total slack | Free slack | Constraint | Cost |
| --- | --- | --- | --- | --- | --- | --- | --- | --- | --- | --- | --- |
| 27 | 1.4.6 | **Kvalitet** |  | 15d | 2021-07-15 | 2021-08-05 | 26 | 433d | 0d |  |  |
| 28 | 1.4.6.1 | Planiranje kvaliteta |  | 12d | 2021-07-15 | 2021-08-02 |  | 433d | 0d |  |  |
| 29 | 1.4.6.2 | Postavljanje standarda kvaliteta |  | 3d | 2021-08-02 | 2021-08-05 | 28 | 433d |  |  |  |
| 30 | 1.4.7 | **Menadžment rizika** |  | 12d | 2021-08-05 | 2021-08-23 | 27 | 433d |  |  |  |
| 31 | 1.4.7.1 | Detaljna analiza do sada pronaćenih rizika |  | 5d | 2021-08-05 | 2021-08-12 | 27 | 433d | 0d |  |  |
| 32 | 1.4.7.2 | Formiranje metoda za ublažavanje ili eliminisanje rizika |  | 5d | 2021-08-12 | 2021-08-19 | 31 | 433d | 0d |  |  |
| 33 | 1.4.7.3 | Upozoravanje članova tima sa predviđenim rizicima |  | 2d | 2021-08-19 | 2021-08-23 | 32 | 433d |  |  |  |
| 34 | 1.4.8 | **Kontrola i monitoring** |  | 480d | 2021-06-09 | 2023-04-26 | 23 | 6d |  |  |  |
| 35 | 1.4.8.1 | Praćenje napretka projekta |  | 480d | 2021-06-09 | 2023-04-26 |  | 6d |  |  |  |
| 36 | 1.4.8.2 | Održavanje redovnih sastanaka |  | 480d | 2021-06-09 | 2023-04-26 |  | 6d |  |  |  |
| 37 | 1.4.8.3 | Upravljanje kvalitetom |  | 480d | 2021-06-09 | 2023-04-26 |  | 6d |  |  |  |
| 38 | 1.4.8.4 | Rešavanje nepredviđenih situacija |  | 480d | 2021-06-09 | 2023-04-26 |  | 6d |  |  |  |
| 39 | 1.4.8.5 | Upravljanje javnim nabavkama |  | 480d | 2021-06-09 | 2023-04-26 |  | 6d |  |  |  |
| 40 | 1.4.8.6 | Praćenje rashoda |  | 480d | 2021-06-09 | 2023-04-26 |  | 6d |  |  |  |
| 41 | 1.4.8.7 | Kontrola rezultata radnih paketa |  | 480d | 2021-06-09 | 2023-04-26 |  | 6d |  |  |  |
| 42 | 1.4.8.8 | Održavanje liste problema |  | 480d | 2021-06-09 | 2023-04-26 |  | 6d |  |  |  |
| 43 | 1.4.8.9 | Praćenje rizika |  | 480d | 2021-06-09 | 2023-04-26 |  | 6d |  |  |  |
| 44 | 1.4.8.10 | Obrada feedbacka od radnika |  | 480d | 2021-06-09 | 2023-04-26 |  | 6d |  |  |  |
| 45 | 1.5 | **Održavanje sastanaka o napretku na projektu** |  | 511d | 2021-05-05 | 2023-05-05 |  |  |  |  | 50,630 |
| 46 | 1.5.1 | **Sastanak nakon prvih 6 meseci** |  | 1d | 2021-11-05 | 2021-11-08 |  |  |  |  |  |
| 47 | 1.5.1.1 | M1: Izveštaj o napretku na projektu 1.1 | milestone | 0d | 2021-11-08 | 2021-11-08 |  | 378d |  | start no earlier than 2021-11-08 |  |
| 48 | 1.5.2 | **Sastanak nakon drugih 6 meseci** |  | 1d | 2022-05-05 | 2022-05-06 |  |  |  |  |  |
| 49 | 1.5.2.1 | M2: Izveštaj o napretku na projektu 1.2 | milestone | 0d | 2022-05-06 | 2022-05-06 |  | 253d |  | start no earlier than 2022-05-06 |  |
| 50 | 1.5.3 | **Sastanak nakon trećih 6 meseci** |  | 1d | 2022-11-05 | 2022-11-07 |  |  |  |  |  |
| 51 | 1.5.3.1 | M3: Izveštaj o napretku na projektu 2.1 | milestone | 0d | 2022-11-07 | 2022-11-07 |  | 123d |  | start no earlier than 2022-11-07 |  |

| ID | WBS | Task | Type | Duration | Start | Finish | Predecessors | Total slack | Free slack | Constraint | Resources | Work | Cost |
| --- | --- | --- | --- | --- | --- | --- | --- | --- | --- | --- | --- | --- | --- |
| 52 | 1.5.4 | **Sastanak nakon poslednjih 6 meseci** |  | 1d | 2023-05-03 | 2023-05-04 |  |  |  |  |  |  |  |
| 53 | 1.5.4.1 | M4: Izveštaj o napretku na projektu 2.2 | milestone | 0d | 2023-05-04 | 2023-05-04 |  | 1d |  | start no earlier than 2023-05-04 |  |  |  |
| 54 | 1.5.5 | **Organizaija Brainstorming-a** |  | 5d | 2022-04-27 | 2022-05-04 |  |  |  |  |  |  |  |
| 55 | 1.5.5.1 | Dogovor u vezi datuma sastanka sa svim predstavnicima participanata |  | 1d | 2022-04-27 | 2022-04-28 |  | 248d | 0d |  |  |  |  |
| 56 | 1.5.5.2 | Ugovaranje smeštaja i prevoza za participante |  | 1d | 2022-04-28 | 2022-04-29 | 55 | 248d | 0d |  |  |  |  |
| 57 | 1.5.5.3 | Zakup prostora i početak pripreme plana sastanka |  | 1d | 2022-04-29 | 2022-05-02 | 56 | 248d | 0d |  |  |  |  |
| 58 | 1.5.5.4 | Razvoj plana sastanka |  | 1d | 2022-05-02 | 2022-05-03 | 57 | 248d | 0d |  |  |  |  |
| 59 | 1.5.5.5 | Završetak organizacije sastanka |  | 1d | 2022-05-03 | 2022-05-04 | 58 | 248d |  |  |  |  |  |
| 60 | 1.5.6 | Održavanje Brainstorming-a |  | 7d | 2022-05-04 | 2022-05-13 | 54 | 248d |  |  | Dnevnica i noćenje u Cirihu (7 dana) [0.1%]; Povratna avionska karta (Stokholm - Cirih) [0.1%]; Povratna avionska karta (Beograd - Cirih) [0.1%]; Povratna avionska karta (Dablin - Cirih) [0.1%]; Povratna avionska karta (Lviv - Cirih) [0.1%]; Povratna avionska karta (Milano - Cirih) [0.1%]; Povratna avionska karta (Monkstovn - Cirih) [0.1%] |  | 35,310 |
| 61 | 1.5.7 | **Organizacija završnog sastanka** |  | 5d | 2023-04-18 | 2023-04-25 |  |  |  |  |  |  |  |
| 62 | 1.5.7.1 | Dogovor u vezi datuma sastanka sa svim predstavnicima participanata |  | 1d | 2023-04-18 | 2023-04-19 |  | 2d | 0d |  |  |  |  |
| 63 | 1.5.7.2 | Ugovaranje smeštaja i prevoza za participante |  | 1d | 2023-04-19 | 2023-04-20 | 62 | 2d | 0d |  |  |  |  |
| 64 | 1.5.7.3 | Zakup prostora i početak pripreme plana sastanka |  | 1d | 2023-04-20 | 2023-04-21 | 63 | 2d | 0d |  |  |  |  |
| 65 | 1.5.7.4 | Razvoj plana sastanka |  | 1d | 2023-04-21 | 2023-04-24 | 64 | 2d | 0d |  |  |  |  |
| 66 | 1.5.7.5 | Završetak organizacije sastanka |  | 1d | 2023-04-24 | 2023-04-25 | 65 | 2d |  |  |  |  |  |
| 67 | 1.5.8 | Održavanje završnog sastanka |  | 5d | 2023-04-25 | 2023-05-03 | 61 | 2d | 0d |  | Dnevnica i noćenje u Beogradu (5 dana) [0.1%]; Povratna avionska karta (Stokholm-Beograd) [0.1%]; Povratna avionska karta (Cirih - Beograd) [0.1%]; Povratna avionska karta (Dablin - Beograd) [0.1%]; Povratna avionska karta (Lviv - Beograd) [0.1%]; Povratna avionska karta (Milano - Beograd) [0.1%]; Povratna avionska karta (Monkstovn - Beograd) [0.1%] |  | 15,320 |
| 68 | 2 | M5: Konačan izveštaj celokupnog projekta | milestone | 0d | 2023-05-03 | 2023-05-03 | 67 | 2d |  |  |  |  |  |
| 69 | 3 | **WP2 - Analiza korisničkih zahteva** |  | 87d | 2021-05-05 | 2021-09-03 |  | 5d | 0d |  | SpiraPlan [0.1%] | 1576h | 56,631 |
| 70 | 3.1 | **Ispitivanje i analiza dosadašnjih postignuća** |  | 24d | 2021-05-05 | 2021-06-08 |  | 5d | 0d |  |  | 1024h | 43,340 |
| 71 | 3.1.1 | **Odlazak u Budimpeštu** |  | 7d | 2021-05-05 | 2021-05-14 |  | 5d | 0d |  | Dnevnica i noćenje u Budimpešti (7 dana) [0.1%]; Povratna avionska karta (Lviv - Budimpešta) [0.1%]; Povratna avionska karta (Stokholm - Budimpešta) [0.1%] | 336h | 15,692 |
| 72 | 3.1.1.1 | Sastanak sa autorima naučnih radova |  | 7d | 2021-05-05 | 2021-05-14 |  | 5d |  |  | Intellias Tim 2 Član 1 [50%]; Intellias Tim Lider 2 [50%]; Karolinska Institutet Tim 1 Član 1 [50%]; Karolinska Institutet Tim 1 Član 2 [50%]; Karolinska Institutet Tim 1 Član 3 [50%]; Karolinska Institutet Tim Lider [50%] | 168h | 4,116 |
| 73 | 3.1.1.2 | Obilazak bolnice |  | 7d | 2021-05-05 | 2021-05-14 |  | 5d |  |  | Intellias Tim 2 Član 1 [50%]; Intellias Tim Lider 2 [50%]; Karolinska Institutet Tim 1 Član 1 [50%]; Karolinska Institutet Tim 1 Član 2 [50%]; Karolinska Institutet Tim 1 Član 3 [50%]; Karolinska Institutet Tim Lider [50%] | 168h | 4,116 |
| 74 | 3.1.2 | **Odlazak u Bazel** |  | 7d | 2021-05-14 | 2021-05-25 | 71 | 5d | 0d |  | Dnevnica i noćenje u Bazelu (7 dana) [0.1%]; Povratna avionska karta (Beograd - Bazel) [0.1%]; Povratna avionska karta (Lviv - Bazel) [0.1%]; Povratna avionska karta (Stokholm - Bazel) [0.1%] | 448h | 22,288 |
| 75 | 3.1.2.1 | Sastanak sa autorima naučnih radova |  | 7d | 2021-05-14 | 2021-05-25 |  | 5d |  |  | ETF Tim 2 Član 1 [50%]; ETF Tim Lider 2 [50%]; Intellias Tim Lider 2 [50%]; Karolinska Institutet Tim 1 Član 1 [50%]; Karolinska Institutet Tim 1 Član 2 [50%]; Karolinska Institutet Tim 1 Član 3 [50%]; Karolinska Institutet Tim Lider [50%]; Intellias Tim 2 Član 3 [50%] | 224h | 4,704 |
| 76 | 3.1.2.2 | Obilazak bolnice |  | 7d | 2021-05-14 | 2021-05-25 |  | 5d |  |  | ETF Tim 2 Član 1 [50%]; ETF Tim Lider 2 [50%]; Intellias Tim Lider 2 [50%]; Karolinska Institutet Tim 1 Član 1 [50%]; Karolinska Institutet Tim 1 Član 2 [50%]; Karolinska Institutet Tim 1 Član 3 [50%]; Karolinska Institutet Tim Lider [50%]; Intellias Tim 2 Član 3 [50%] | 224h | 4,704 |
| 77 | 3.1.3 | Testiranje dosadašnjih postignuća |  | 10d | 2021-05-25 | 2021-06-08 | 71, 74 | 5d |  |  | Karolinska Institutet Tim 1 Član 1; Karolinska Institutet Tim 1 Član 2; Karolinska Institutet Tim Lider | 240h | 5,360 |

| ID | WBS | Task | Duration | Start | Finish | Predecessors | Total slack | Free slack | Resources | Work | Cost |
| --- | --- | --- | --- | --- | --- | --- | --- | --- | --- | --- | --- |
| 78 | 3.2 | **Sprovođenje anketa korisnika** | 15d | 2021-06-08 | 2021-06-29 | 70 | 5d | 0d |  | 472h | 10,496 |
| 79 | 3.2.1 | Odabir lokacija za sprovođenje ankete | 3d | 2021-06-08 | 2021-06-11 |  | 17d |  | ETF Tim 2 Član 1; Intellias Tim 2 Član 1; Intellias Tim Lider 2 | 72h | 1,656 |
| 80 | 3.2.2 | Formiranje pitanja | 5d | 2021-06-08 | 2021-06-15 |  | 5d | 0d | Karolinska Institutet Tim Lider; Karolinska Institutet Tim 1 Član 1; ETF Tim 2 Član 2; Intellias Tim 2 Član 2 | 160h | 3,320 |
| 81 | 3.2.3 | Prikupljanje odgovora | 10d | 2021-06-15 | 2021-06-29 | 80 | 5d |  | ETF Tim 2 Član 1; Intellias Tim 2 Član 1; Intellias Tim Lider 2 | 240h | 5,520 |
| 82 | 3.3 | **Analiza odgovora anketa** | 10d | 2021-06-29 | 2021-07-13 | 78 | 5d | 0d |  | 80h | 1,920 |
| 83 | 3.3.1 | Unošenje rezultata | 5d | 2021-06-29 | 2021-07-06 |  | 5d | 0d | Karolinska Institutet Tim 1 Član 1; Intellias Tim 1 Član 1 | 80h | 1,920 |
| 84 | 3.3.2 | Generisanje grafikona odgovora | 2d | 2021-07-06 | 2021-07-08 | 83 | 5d | 0d |  |  |  |
| 85 | 3.3.3 | Analiza grafikona | 3d | 2021-07-08 | 2021-07-13 | 84 | 5d |  |  |  |  |
| 86 | 3.4 | **Definisanje potrebnih funkcionalnosti softvera** | 17d | 2021-07-13 | 2021-08-05 | 82 | 5d | 0d |  |  |  |
| 87 | 3.4.1 | Definisanje glavnih korisničkih funkcionalnosti | 10d | 2021-07-13 | 2021-07-27 |  | 5d | 0d |  |  |  |
| 88 | 3.4.2 | Konsultacije sa lekarima | 10d | 2021-07-13 | 2021-07-27 |  | 12d |  |  |  |  |
| 89 | 3.4.3 | Definisanje dodatnih funkcionalnosti | 7d | 2021-07-27 | 2021-08-05 | 87 | 5d |  |  |  |  |
| 90 | 3.5 | **Definisanje potrebnih funkcionalnosti hardvera** | 17d | 2021-08-05 | 2021-08-30 | 86 | 5d | 0d |  |  |  |
| 91 | 3.5.1 | Definisanje glavnih korisničkih funkcionalnosti | 10d | 2021-08-05 | 2021-08-19 |  | 5d | 0d |  |  |  |
| 92 | 3.5.2 | Konsultacije sa lekarima | 10d | 2021-08-05 | 2021-08-19 |  | 12d |  |  |  |  |
| 93 | 3.5.3 | Definisanje dodatnih funkcionalnosti | 7d | 2021-08-19 | 2021-08-30 | 91 | 5d |  |  |  |  |
| 94 | 3.6 | **Izbor odgovarajućeg PMLC modela** | 4d | 2021-08-30 | 2021-09-03 | 90, 86 | 5d |  |  |  |  |
| 95 | 3.6.1 | Analiza potrebnog tima | 3d | 2021-08-30 | 2021-09-02 |  | 5d | 0d |  |  |  |
| 96 | 3.6.2 | Analiza dinamike postojećih timova | 3d | 2021-08-30 | 2021-09-02 |  | 5d | 0d |  |  |  |
| 97 | 3.6.3 | Odabir konkretnog modela | 1d | 2021-09-02 | 2021-09-03 | 95, 96 | 5d |  |  |  |  |
| 98 | 4 | **WP3 - Analiza i detalji dizajna sistema** | 64d | 2021-09-03 | 2021-12-02 | 69 | 5d | 0d | SpiraPlan [0.1%] | 3376h | 79,755 |
| 99 | 4.1 | Identifikovanje komponenti sistema | 10d | 2021-09-03 | 2021-09-17 |  | 5d | 0d | ETF Tim Lider 3; Intellias Tim 1 Član 1; Intellias Tim Lider 1; Karolinska Institutet Tim Lider; Medtronic Tim Lider1 | 400h | 10,000 |
| 100 | 4.2 | **Dizajn celokupnog sistema** | 14d | 2021-09-17 | 2021-10-07 | 99 | 5d | 0d |  | 896h | 20,160 |
| 101 | 4.2.1 | Dizajn softverskih komponenti | 14d | 2021-09-17 | 2021-10-07 |  | 5d |  | ETF Tim 3 Član 1; Intellias Tim 1 Član 1; Intellias Tim Lider 1; Medtronic Tim 1 Član 4 | 448h | 10,640 |
| 102 | 4.2.2 | Dizajn hardverskih komponenti | 14d | 2021-09-17 | 2021-10-07 |  | 5d |  | ETF Tim 3 Član 2; Intellias Tim 1 Član 2; Karolinska Institutet Tim 1 Član 2; Intellias Tim 1 Član 3 | 448h | 9,520 |

| ID | WBS | Task | Type | Duration | Start | Finish | Predecessors | Total slack | Free slack | Resources | Work | Cost |
| --- | --- | --- | --- | --- | --- | --- | --- | --- | --- | --- | --- | --- |
| 103 | 4.3 | **Detaljan dizajn sistema** |  | 10d | 2021-10-07 | 2021-10-21 | 100 | 5d | 0d |  | 640h | 14,400 |
| 104 | 4.3.1 | Detaljan dizajn softverskih komponenti |  | 10d | 2021-10-07 | 2021-10-21 |  | 5d |  | ETF Tim 3 Član 1; Intellias Tim 1 Član 1; Intellias Tim Lider 1; Medtronic Tim 1 Član 4 | 320h | 7,600 |
| 105 | 4.3.2 | Detaljan dizajn hardverskih komponenti |  | 10d | 2021-10-07 | 2021-10-21 |  | 5d |  | ETF Tim 3 Član 2; Intellias Tim 1 Član 2; Karolinska Institutet Tim 1 Član 2; Intellias Tim 1 Član 3 | 320h | 6,800 |
| 106 | 4.4 | Izrada prototipa |  | 30d | 2021-10-21 | 2021-12-02 | 103 | 5d | 0d | ETF Tim 1 Član 1; Intellias Tim 1 Član 1; Intellias Tim 1 Član 2; Intellias Tim Lider 1; Karolinska Institutet Tim 1 Član 1; Medtronic Tim 1 Član 1 | 1440h | 34,320 |
| 107 | 5 | M6: Prototip | milestone | 0d | 2021-12-02 | 2021-12-02 | 106 | 360d |  |  |  |  |
| 108 | 6 | **WP4 - Razvijanje hardverske komponente (uređaja)** |  | 179d | 2021-12-02 | 2022-08-17 | 98 | 181d |  | Autodesk Product Design & Manufacturing Collection - AutoCad [0.1%]; Biohemijski analizator [1 Komad]; Krvni pritisak senzor [2 Komad]; Senzor za merenje otkucaja srca [2 Komad]; Sistem za kontrolu glukoze u krvi [2 Komad]; Štampač i skener [4 Komad]; Štipaljke za EKG - visokokvalitetni kablovi i elektrode [12 Komad]; Organizacija tim bildinga [0.1%] | 6928.8h | 203,330 |
| 109 | 6.1 | Odlazak u Dablin - tim bilding |  | 10d | 2021-12-02 | 2021-12-16 |  | 181d | 0d | Dnevnica i noćenje u Dablinu (10 dana) [0.1%]; Povratna avionska karta (Beograd - Dablin) [0.1%]; Povratna avionska karta (Cirih - Dablin) [0.1%]; ETF Tim 1 Član 1; ETF Tim 1 Član 2; ETF Tim 1 Član 3; ETF Tim 1 Član 4; ETF Tim 1 Član 5; ETF Tim Lider 1; ETH Tim 1 Član 3; ETH Tim 1 Član 4; ETH Tim Lider 1 | 720h | 33,430 |
| 110 | 6.2 | Razvoj senzora |  | 30d | 2021-12-16 | 2022-01-28 | 109 | 290d | 109d | ETF Tim 1 Član 1 [80%]; Medtronic Tim 1 Član 1 [80%]; Medtronic Tim Lider1 [80%] | 576h | 12,672 |
| 111 | 6.3 | Razvoj procesora |  | 60d | 2021-12-16 | 2022-03-15 | 109 | 181d | 0d | ETF Tim 1 Član 5; Medtronic Tim 2 Član 1; Medtronic Tim 2 Član 2; Medtronic Tim 2 Član 3; Medtronic Tim Lider 2 | 2400h | 56,640 |
| 112 | 6.4 | Razvoj jedinice za napajanje |  | 14d | 2022-03-15 | 2022-04-05 | 111 | 181d | 0d | ETF Tim 1 Član 1 [80%]; Medtronic Tim 1 Član 1 [80%]; Medtronic Tim Lider1 [80%] | 268.8h | 5,913.6 |
| 113 | 6.5 | Razvoj dodatnih hardverskih jedinica |  | 65d | 2022-04-05 | 2022-07-05 | 112 | 181d | 0d | ETF Tim 1 Član 5; Medtronic Tim 2 Član 1; Medtronic Tim 2 Član 2; Medtronic Tim Lider 2 | 2080h | 47,840 |
| 114 | 6.6 | **Testiranje hardverske komponente** |  | 30d | 2022-07-05 | 2022-08-17 | 110, 111, 112, 113 | 181d | 0d |  | 884h | 19,014.4 |
| 115 | 6.6.1 | Testiranje funkcionalnosti |  | 20d | 2022-07-05 | 2022-08-03 |  | 181d | 0d | ETF Tim 1 Član 1 [70%]; Medtronic Tim 1 Član 1 [70%]; Medtronic Tim Lider1 [70%]; Medtronic Tim 1 Član 2 [70%] | 448h | 10,304 |
| 116 | 6.6.2 | Identifikovanje potencijalnih nedostataka |  | 7d | 2022-08-03 | 2022-08-12 | 115 | 184d |  | ETF Tim 1 Član 1 [70%]; ETF Tim 1 Član 2 [70%]; Medtronic Tim 1 Član 1 [70%]; Medtronic Tim Lider1 [70%]; ETH Tim 1 Član 2 [70%] | 196h | 4,390.4 |
| 117 | 6.6.3 | Ispitivanje verovatnoće kvara |  | 10d | 2022-08-03 | 2022-08-17 | 115 | 181d |  | ETF Tim 1 Član 5; Medtronic Tim 2 Član 1 [50%]; Medtronic Tim 2 Član 2 [50%] | 160h | 2,880 |
| 118 | 6.6.4 | Ispitivanje životnog veka uređaja |  | 5d | 2022-08-03 | 2022-08-10 | 115 | 186d |  | ETF Tim 1 Član 4; Medtronic Tim 2 Član 3 [50%]; Medtronic Tim 2 Član 4 [50%] | 80h | 1,440 |
| 119 | 7 | M7: Hardverski uređaj | milestone | 0d | 2022-08-17 | 2022-08-17 | 114 | 181d |  |  |  |  |
| 120 | 8 | **WP5 - Razvijanje softverske komponente** |  | 190d | 2021-12-02 | 2022-09-01 | 98 | 5d | 0d | Grafička karta [8 Komad]; Mobilni telefon - napredne funkcionalnosti [2 Komad]; Mobilni telefon - osnovne funkcionalnosti [2 Komad]; Oracle DBMS [0.1%]; Računar [12 Komad]; Server [2 Komad]; Windows Server Datacenter 2019 [0.1%]; Google cloud - TPU (tensor Processing Unit) [0.1%]; Organizacija tim bildinga [0.1%]; Usluge Equinix data centra [0.1%] | 6845.6h | 701,433.8 |
| 121 | 8.1 | Odlazak u Cirih - tim bilding |  | 10d | 2021-12-02 | 2021-12-16 |  | 5d | 0d | Dnevnica i noćenje u Cirihu (10 dana) [0.1%]; Povratna avionska karta (Beograd - Cirih) [0.1%]; Povratna avionska karta (Lviv - Cirih) [0.1%]; ETF Tim 2 Član 1; ETF Tim 2 Član 2; ETF Tim 2 Član 3; ETF Tim 2 Član 4; ETF Tim 2 Član 5; ETF Tim Lider 2; Intellias Tim 1 Član 1; Intellias Tim 1 Član 2; Intellias Tim Lider 1 | 720h | 29,760 |
| 122 | 8.2 | **Upravljanje nabavkama** |  | 9d | 2021-12-16 | 2021-12-29 |  | 5d | 0d |  | 132h | 3,652 |
| 123 | 8.2.1 | Raspisivanje nabavke |  | 3d | 2021-12-16 | 2021-12-21 | 121 | 5d | 0d | ETF Tim Lider 2 [50%]; ETH Tim Lider 1 [50%]; Intellias Tim Lider 1 [50%] | 36h | 996 |
| 124 | 8.2.2 | Evaluacija nabavke |  | 2d | 2021-12-21 | 2021-12-23 | 123 | 5d | 0d | ETF Tim Lider 2 [50%]; ETH Tim Lider 1 [50%]; Intellias Tim Lider 1 [50%] | 24h | 664 |
| 125 | 8.2.3 | Izbor dobavljača |  | 2d | 2021-12-23 | 2021-12-27 | 124 | 5d | 0d | ETF Tim Lider 2 [50%]; ETH Tim Lider 1 [50%]; Intellias Tim Lider 1 [50%] | 24h | 664 |
| 126 | 8.2.4 | Ugovaranje sa dobavljačem |  | 2d | 2021-12-27 | 2021-12-29 | 125 | 5d |  | ETH Tim Lider 1; Intellias Tim Lider 1; ETF Tim Lider 2 | 48h | 1,328 |
| 127 | 8.3 | Osposobljavanje servera |  | 18d | 2021-12-29 | 2022-01-25 | 122 | 5d | 0d | ETF Tim 2 Član 4; ETF Tim Lider 2; ETH Tim Lider 1; Intellias Tim 1 Član 3 | 576h | 12,672 |
| 128 | 8.4 | Realizacija baze podataka |  | 20d | 2022-01-25 | 2022-02-24 | 127 | 5d | 0d | ETF Tim 2 Član 1 [80%]; ETF Tim 2 Član 2 [80%]; ETF Tim Lider 2 [80%]; ETH Tim 1 Član 1 [80%]; ETH Tim Lider 1 [80%]; Intellias Tim 2 Član 1 [80%]; Intellias Tim Lider 2 [80%] | 896h | 21,248 |

| ID | WBS | Task | Type | Duration | Start | Finish | Predecessors | Total slack | Free slack | Resources | Work | Cost |
| --- | --- | --- | --- | --- | --- | --- | --- | --- | --- | --- | --- | --- |
| 129 | 8.5 | **Obučavanje neuralne mreže** |  | 69d | 2022-02-24 | 2022-06-02 | 128 | 5d | 0d |  | 2705.6h | 66,884.8 |
| 130 | 8.5.1 | Priprema podataka, čišćenje i otklanjanje grešaka |  | 7d | 2022-02-24 | 2022-03-07 |  | 5d | 0d | ETF Tim 2 Član 1; ETF Tim 2 Član 2; ETH Tim 1 Član 4; Intellias Tim 2 Član 3 | 224h | 4,648 |
| 131 | 8.5.2 | Vizuelizacija podataka i analiza |  | 14d | 2022-03-07 | 2022-03-28 | 130 | 5d | 0d | ETF Tim 2 Član 1; ETF Tim Lider 2; ETH Tim 1 Član 1; ETH Tim Lider 1; Intellias Tim 1 Član 1; Intellias Tim Lider 1 | 672h | 17,472 |
| 132 | 8.5.3 | Treniranje modela - podešavanje hiperparametara |  | 38d | 2022-03-28 | 2022-05-19 | 131 | 5d | 0d | ETF Tim 2 Član 4 [70%]; ETF Tim 2 Član 5 [70%]; ETF Tim Lider 2 [70%]; ETH Tim 1 Član 4 [70%]; ETH Tim Lider 1 [70%]; Intellias Tim 2 Član 1 [70%]; Intellias Tim Lider 2 [70%] | 1489.6h | 35,324.8 |
| 133 | 8.5.4 | Testiranje modela |  | 10d | 2022-05-19 | 2022-06-02 | 132 | 5d |  | ETF Tim 2 Član 1; ETH Tim 1 Član 4; ETH Tim Lider 1; Intellias Tim Lider 2 | 320h | 9,440 |
| 134 | 8.6 | Realizacija aplikacije |  | 35d | 2022-06-02 | 2022-07-21 | 129 | 5d | 0d | ETF Tim 2 Član 3; ETF Tim 2 Član 4; ETF Tim Lider 2; ETH Tim 1 Član 3 | 1120h | 18,760 |
| 135 | 8.7 | **Testiranje softverske komponente** |  | 29d | 2022-07-21 | 2022-09-01 | 134 | 5d | 0d |  | 696h | 12,992 |
| 136 | 8.7.1 | Testiranje funkcionalnosti |  | 22d | 2022-07-21 | 2022-08-23 |  | 5d | 0d | ETF Tim 2 Član 1; ETF Tim 2 Član 2; ETH Tim 1 Član 1 | 528h | 9,856 |
| 137 | 8.7.2 | Pronalaženje nedostataka i njihovo otklanjanje |  | 7d | 2022-08-23 | 2022-09-01 | 136 | 5d |  | ETF Tim 2 Član 1; ETF Tim 2 Član 2; ETH Tim 1 Član 1 | 168h | 3,136 |
| 138 | 9 | M8: Aplikacija | milestone | 0d | 2022-09-01 | 2022-09-01 | 134, 135 | 170d |  |  |  |  |
| 139 | 10 | **WP6 - Integracija sistema** |  | 60d | 2022-09-01 | 2022-11-25 | 120 | 5d | 0d |  | 3040h | 81,280 |
| 140 | 10.1 | Integracija softverske komponente |  | 20d | 2022-09-01 | 2022-09-29 |  | 5d | 0d | Zenith Tim 1 Član 1; Zenith Tim 1 Član 2; Zenith Tim 1 Član 3; Zenith Tim Lider 1; Zenith Tim 2 Član 1; Zenith Tim 2 Član 2 | 960h | 26,400 |
| 141 | 10.2 | Integracija hardverske komponente |  | 20d | 2022-09-29 | 2022-10-27 | 140 | 5d | 0d | Zenith Tim 2 Član 1; Zenith Tim 2 Član 2; Zenith Tim 2 Član 3; Zenith Tim Lider 2; Zenith Tim 1 Član 1; Zenith Tim 1 Član 2 | 960h | 26,400 |
| 142 | 10.3 | M9: Izveštaj uspešnosti integracije | milestone | 0d | 2022-10-27 | 2022-10-27 | 140, 141 | 25d |  |  |  |  |
| 143 | 10.4 | Integracija celokupnog sistema |  | 20d | 2022-10-27 | 2022-11-25 | 141 | 5d | 0d | ETF Tim 2 Član 1; Zenith Tim 1 Član 1; Zenith Tim 1 Član 2; Zenith Tim 2 Član 1; Zenith Tim 2 Član 2; Zenith Tim Lider 1; Zenith Tim Lider 2 | 1120h | 28,480 |
| 144 | 11 | M10: Integrisan sistem - funkcionalna celina | milestone | 0d | 2022-11-25 | 2022-11-25 | 143 | 110d |  |  |  |  |
| 145 | 12 | **WP7 - Testiranje sistema** |  | 62d | 2022-11-25 | 2023-02-23 | 139 | 5d | 0d | SpiraTest [0.1%] | 3304h | 85,976 |
| 146 | 12.1 | **Jedinično testiranje** |  | 16d | 2022-11-25 | 2022-12-19 |  | 5d | 0d |  | 792h | 18,968 |
| 147 | 12.1.1 | Planiranje testova |  | 2d | 2022-11-25 | 2022-11-29 |  | 5d | 0d | AppQuality Tim 1 Član 1; AppQuality Tim 1 Član 2; AppQuality Tim 1 Član 3; AppQuality Tim Lider 1 | 64h | 1,776 |
| 148 | 12.1.2 | Izrada testova |  | 7d | 2022-11-29 | 2022-12-08 | 147 | 5d | 0d | AppQuality Tim 1 Član 1; AppQuality Tim 1 Član 2; AppQuality Tim 1 Član 3; AppQuality Tim Lider 1 | 224h | 6,216 |
| 149 | 12.1.3 | Testiranje |  | 7d | 2022-12-08 | 2022-12-19 | 148 | 5d |  | AppQuality Tim 1 Član 1; AppQuality Tim 1 Član 2; AppQuality Tim 1 Član 3; AppQuality Tim 1 Član 4; AppQuality Tim 1 Član 5; AppQuality Tim Lider 1; ETF Tim 3 Član 4; ETF Tim 3 Član 5; ETF Tim Lider 3 | 504h | 10,976 |
| 150 | 12.2 | **Integraciono testiranje** |  | 16d | 2022-12-19 | 2023-01-10 | 146 | 5d | 0d |  | 792h | 18,968 |
| 151 | 12.2.1 | Planiranje testova |  | 2d | 2022-12-19 | 2022-12-21 |  | 5d | 0d | AppQuality Tim 1 Član 1; AppQuality Tim 1 Član 2; AppQuality Tim 1 Član 3; AppQuality Tim Lider 1 | 64h | 1,776 |
| 152 | 12.2.2 | Izrada testova |  | 7d | 2022-12-21 | 2022-12-30 | 151 | 5d | 0d | AppQuality Tim 1 Član 1; AppQuality Tim 1 Član 2; AppQuality Tim 1 Član 3; AppQuality Tim Lider 1 | 224h | 6,216 |
| 153 | 12.2.3 | Testiranje |  | 7d | 2022-12-30 | 2023-01-10 | 152 | 5d |  | AppQuality Tim 1 Član 1; AppQuality Tim 1 Član 2; AppQuality Tim 1 Član 3; AppQuality Tim 1 Član 4; AppQuality Tim 1 Član 5; AppQuality Tim Lider 1; ETF Tim 3 Član 4; ETF Tim 3 Član 5; ETF Tim Lider 3 | 504h | 10,976 |

| ID | WBS | Task | Type | Duration | Start | Finish | Predecessors | Total slack | Free slack | Resources | Work | Cost |
| --- | --- | --- | --- | --- | --- | --- | --- | --- | --- | --- | --- | --- |
| 154 | 12.3 | **Sistemsko testiranje** |  | 16d | 2023-01-10 | 2023-02-01 | 150 | 5d | 0d |  | 792h | 18,968 |
| 155 | 12.3.1 | Planiranje testova |  | 2d | 2023-01-10 | 2023-01-12 |  | 5d | 0d | AppQuality Tim 1 Član 1; AppQuality Tim 1 Član 2; AppQuality Tim 1 Član 3; AppQuality Tim Lider 1 | 64h | 1,776 |
| 156 | 12.3.2 | Izrada testova |  | 7d | 2023-01-12 | 2023-01-23 | 155 | 5d | 0d | AppQuality Tim 1 Član 1; AppQuality Tim 1 Član 2; AppQuality Tim 1 Član 3; AppQuality Tim Lider 1 | 224h | 6,216 |
| 157 | 12.3.3 | Testiranje |  | 7d | 2023-01-23 | 2023-02-01 | 156 | 5d |  | AppQuality Tim 1 Član 1; AppQuality Tim 1 Član 2; AppQuality Tim 1 Član 3; AppQuality Tim 1 Član 4; AppQuality Tim 1 Član 5; AppQuality Tim Lider 1; ETF Tim 3 Član 4; ETF Tim 3 Član 5; ETF Tim Lider 3 | 504h | 10,976 |
| 158 | 12.4 | **Performansno testiranje** |  | 5d | 2023-02-01 | 2023-02-08 | 154 | 14d |  |  | 160h | 2,960 |
| 159 | 12.4.1 | Testiranje opterećenja - Load testing |  | 5d | 2023-02-01 | 2023-02-08 |  | 14d |  | ETF Tim 3 Član 1 [50%]; AppQuality Tim 1 Član 1 [50%]; AppQuality Tim 1 Član 2 [50%]; ETF Tim 3 Član 2 [50%] | 80h | 1,480 |
| 160 | 12.4.2 | Stres testiranje - Stress testing |  | 5d | 2023-02-01 | 2023-02-08 |  | 14d |  | ETF Tim 3 Član 1 [50%]; AppQuality Tim 1 Član 1 [50%]; AppQuality Tim 1 Član 2 [50%]; ETF Tim 3 Član 2 [50%] | 80h | 1,480 |
| 161 | 12.5 | Testiranje sigurnosti sistema |  | 10d | 2023-02-01 | 2023-02-17 | 154 | 9d |  | AppQuality Tim 1 Član 3; AppQuality Tim 1 Član 4; AppQuality Tim Lider 1; ETF Tim 3 Član 5 | 320h | 7,520 |
| 162 | 12.6 | **Test prihvatanja od strane korisnika** |  | 14d | 2023-02-01 | 2023-02-23 | 154 | 5d | 0d |  | 448h | 10,192 |
| 163 | 12.6.1 | Alfa testiranje |  | 7d | 2023-02-01 | 2023-02-10 |  | 5d | 0d | AppQuality Tim 1 Član 5; AppQuality Tim 1 Član 6; ETF Tim 3 Član 3 | 168h | 3,584 |
| 164 | 12.6.2 | Beta testiranje |  | 7d | 2023-02-10 | 2023-02-23 | 163 | 5d |  | AppQuality Tim 1 Član 5; AppQuality Tim 1 Član 6; ETF Tim 3 Član 3; AppQuality Tim 1 Član 1; AppQuality Tim 1 Član 2 | 280h | 6,608 |
| 165 | 13 | M11: Izveštaj testiranja | milestone | 0d | 2023-02-23 | 2023-02-23 | 162 | 48d |  |  |  |  |
| 166 | 14 | **WP8 - Дисиминација и експлоатација** |  | 43d | 2023-02-23 | 2023-04-27 | 145 | 5d |  | Izrada promotivnog materijala [0.1%]; Usluge firme za marketing [0.1%]; Advokatske usluge [0.1%] | 2904h | 174,196 |
| 167 | 14.1 | Izrada promotivnog materijala |  | 3d | 2023-02-23 | 2023-02-28 |  | 5d | 0d | ETF Tim 3 Član 1 [50%]; ETF Tim 3 Član 2 [50%] | 24h | 240 |
| 168 | 14.2 | Izrada vizuelnog projekta |  | 3d | 2023-02-23 | 2023-02-28 |  | 5d | 0d | ETF Tim 3 Član 3; ETF Tim Lider 3 [80%]; ETF Tim 3 Član 4 | 67.2h | 691.2 |
| 169 | 14.3 | Objavljivanje u medijima i na društvenim mrežama |  | 3d | 2023-02-23 | 2023-02-28 |  | 5d | 0d | ETF Tim 3 Član 5; ETF Tim Lider 3 [20%] | 28.8h | 292.8 |
| 170 | 14.4 | **Organizovanje i učestvovanje na konferencijama** |  | 40d | 2023-02-28 | 2023-04-27 | 167, 168, 169 | 5d |  |  | 2784h | 130,972 |
| 171 | 14.4.1 | Konferencija u San Francisku |  | 10d | 2023-02-28 | 2023-03-14 |  | 5d | 0d | Dnevnica i noćenje u San Francisku (10 dana) [0.1%]; Povratna avionska karta (Beograd - San Francisko) [0.1%]; Povratna avionska karta (Cirih - San Francisko) [0.1%]; Povratna avionska karta (Dablin - San Francisko) [0.1%]; ETF Tim 3 Član 1; ETF Tim 3 Član 2; ETF Tim 3 Član 3; ETF Tim 3 Član 4; ETF Tim 3 Član 5; ETF Tim Lider 3; ETH Tim 1 Član 1; ETH Tim 1 Član 2; ETH Tim Lider 1; Medtronic Tim 2 Član 1; Medtronic Tim 2 Član 2; Medtronic Tim Lider 2 | 960h | 47,040 |
| 172 | 14.4.2 | Konferencija u Amsterdamu |  | 10d | 2023-03-14 | 2023-03-29 | 171 | 5d | 0d | Dnevnica i noćenje u Amsterdamu (10 dana) [0.1%]; Povratna avionska karta (Beograd - Amsterdam) [0.1%]; Povratna avionska karta (Cirih - Amsterdam) [0.1%]; ETF Tim 3 Član 1; ETF Tim Lider 3; ETH Tim 1 Član 1; ETH Tim Lider 1 | 320h | 14,320 |
| 173 | 14.4.3 | Konferencija u Rimu |  | 7d | 2023-03-29 | 2023-04-07 | 172 | 18d |  | Dnevnica i noćenje u Rimu (7 dana) [0.1%]; Povratna avionska karta (Beograd - Rim) [0.1%]; Povratna avionska karta (Dablin - Rim) [0.1%]; ETF Tim 3 Član 1; ETF Tim Lider 3; Medtronic Tim 2 Član 1; Medtronic Tim Lider 2 | 224h | 9,712 |
| 174 | 14.4.4 | Konferencija u Londonu |  | 10d | 2023-03-29 | 2023-04-12 | 172 | 5d | 0d | Dnevnica i noćenje u Londonu (10 dana) [0.1%]; Povratna avionska karta (Beograd - London) [0.1%]; Povratna avionska karta (Cirih - London) [0.1%]; ETF Tim 3 Član 2; ETF Tim 3 Član 3; ETF Tim 3 Član 4; ETF Tim 3 Član 5; ETH Tim 1 Član 1; ETH Tim Lider 1 | 480h | 23,160 |
| 175 | 14.4.5 | Konferencija u Tokiju |  | 10d | 2023-04-12 | 2023-04-27 | 174 | 5d |  | Dnevnica i noćenje u Tokiju (10 dana) [0.1%]; Povratna avionska karta (Beograd - Tokio) [0.1%]; Povratna avionska karta (Cirih - Tokio) [0.1%]; Povratna avionska karta (Dablin - Tokio) [0.1%]; ETF Tim 3 Član 1; ETF Tim 3 Član 2; ETF Tim 3 Član 3; ETF Tim 3 Član 4; ETF Tim 3 Član 5; ETF Tim Lider 3; ETH Tim 1 Član 1; ETH Tim Lider 1; Medtronic Tim 2 Član 1; Medtronic Tim Lider 2 | 800h | 36,740 |
